Schedule from MS Project, 2021-03-01 to 2021-04-06, 24 hours a day.
Microsoft

## Calendars

- 24 小时: Mon-Sun 00:00-24:00. Exceptions (off unless hours are given): 2021-03-03 to 2021-03-11 05:00-22:00 (基础准备阶段).

## Resources

| Resource |
| --- |
| 姜浩 |
| 杨立志 |
| 陆炎 |
| 臧含 |
| 电气人员 |
| 机械人员 |
| 液压人员 |

## Schedule

| ID | WBS | Task | Duration | Start | Finish | Predecessors | Total slack | Resources | Work |
| --- | --- | --- | --- | --- | --- | --- | --- | --- | --- |
| 1 | 1 | **装配** | 4.83d | 2021-03-01 00:00 | 2021-03-06 22:00 |  | 0d |  | 195h |
| 2 | 1.1 | 未上轨装配 | 2d | 2021-03-01 00:00 | 2021-03-03 00:00 |  | 0d | 机械人员; 液压人员; 电气人员 | 144h |
| 3 | 1.2 | 上轨装配 | 17h | 2021-03-06 05:00 | 2021-03-06 22:00 | 9 | 0.71d | 机械人员; 液压人员; 电气人员 | 51h |
| 4 | 2 | **功能实现阶段** | 17.38d? | 2021-03-03 05:00 | 2021-03-23 00:00 |  | 0d |  | 83h |
| 5 | 2.1 | **通信及信号测试** | 0.71d? | 2021-03-03 05:00 | 2021-03-03 22:00 | 2 | 0d |  | 32h |
| 6 | 2.1.1 | 传感器数值校验等 | 15h? | 2021-03-03 05:00 | 2021-03-03 20:00 |  | 0d | 姜浩; 电气人员 | 30h |
| 7 | 2.1.2 | 行走缸/举升缸零点配置 | 2h? | 2021-03-03 20:00 | 2021-03-03 22:00 | 6 | 0d | 姜浩 | 2h |
| 8 | 2.2 | 急停和恢复 | 17h | 2021-03-04 05:00 | 2021-03-04 22:00 | 5 | 0d | 姜浩; 电气人员 | 34h |
| 9 | 2.3 | **一阶段测试（设备未上轨）** | 0.71d? | 2021-03-05 05:00 | 2021-03-05 22:00 | 8 | 0d |  |  |
| 10 | 2.3.1 | 行走缸/举升缸开环伸缩（不考虑死区) | 5h? | 2021-03-05 05:00 | 2021-03-05 10:00 | 8 | 0d |  |  |
| 11 | 2.3.2 | 行走缸/举升缸闭环伸缩（简单PI) | 2h? | 2021-03-05 10:00 | 2021-03-05 12:00 | 10 | 0d |  |  |
| 12 | 2.3.3 | 前后锁紧块锁销动作 | 1h? | 2021-03-05 12:00 | 2021-03-05 13:00 | 11 | 0d |  |  |
| 13 | 2.3.4 | 六种单步工艺校验 | 9h? | 2021-03-05 13:00 | 2021-03-05 22:00 | 12 | 0d |  |  |
| 14 | 2.4 | **二阶段测试（配合上轨装配/连接测试)** | 1.42d? | 2021-03-06 05:00 | 2021-03-07 22:00 | 9 | 0d |  |  |
| 15 | 2.4.1 | 配合机械/电气装配 | 17h? | 2021-03-06 05:00 | 2021-03-06 22:00 |  | 0d |  |  |
| 16 | 2.4.2 | 测试上轨后行走缸移动是否顺滑 | 17h? | 2021-03-07 05:00 | 2021-03-07 22:00 | 15 | 0d |  |  |
| 17 | 2.5 | **液压开环** | 0.71d? | 2021-03-08 05:00 | 2021-03-08 22:00 | 14, 3 | 0d |  |  |
| 18 | 2.5.1 | 行走缸/举升缸死区确认 | 5h? | 2021-03-08 05:00 | 2021-03-08 10:00 |  | 0d |  |  |
| 19 | 2.5.2 | 行走缸/举升缸最大速度确认 | 12h? | 2021-03-08 10:00 | 2021-03-08 22:00 | 18 | 0d |  |  |
| 20 | 2.6 | **锁销动作** | 0.71d? | 2021-03-09 05:00 | 2021-03-09 22:00 | 17 | 0d |  | 17h |
| 21 | 2.6.1 | 利用开环控制手动完成一次爬行 | 17h? | 2021-03-09 05:00 | 2021-03-09 22:00 |  | 0d | 液压人员 | 17h |
| 22 | 2.6.2 | 确认一步和半步的孔距 | 17h? | 2021-03-09 05:00 | 2021-03-09 22:00 |  | 0d |  |  |
| 23 | 2.7 | **液压闭环** | 1.42d? | 2021-03-10 05:00 | 2021-03-11 22:00 | 20 | 0d |  |  |
| 24 | 2.7.1 | 行走缸闭环 | 17h? | 2021-03-10 05:00 | 2021-03-10 22:00 |  | 0d |  |  |
| 25 | 2.7.2 | 举升缸闭环 | 17h | 2021-03-11 05:00 | 2021-03-11 22:00 | 24 | 0d |  |  |
| 26 | 2.8 | 手动/单步调试（手动操作) | 2d? | 2021-03-12 00:00 | 2021-03-14 00:00 | 23 | 0d |  |  |

Notes:
- 19: 可能有危险，损坏元器件，可以考虑不做

| ID | WBS | Task | Duration | Start | Finish | Predecessors | Total slack |
| --- | --- | --- | --- | --- | --- | --- | --- |
| 27 | 2.9 | **自动任务（单步操作)** | 3d? | 2021-03-14 00:00 | 2021-03-17 00:00 | 26 | 0d |
| 28 | 2.9.1 | 顺逆一步 | 12h? | 2021-03-14 00:00 | 2021-03-14 12:00 |  | 0d |
| 29 | 2.9.2 | 逆顺一步 | 12h? | 2021-03-14 12:00 | 2021-03-15 00:00 | 28 | 0d |
| 30 | 2.9.3 | 中逆半步 | 12h? | 2021-03-15 00:00 | 2021-03-15 12:00 | 29 | 0d |
| 31 | 2.9.4 | 逆中半步 | 12h? | 2021-03-15 12:00 | 2021-03-16 00:00 | 30 | 0d |
| 32 | 2.9.5 | 中顺半步 | 12h? | 2021-03-16 00:00 | 2021-03-16 12:00 | 31 | 0d |
| 33 | 2.9.6 | 顺中半步 | 12h? | 2021-03-16 12:00 | 2021-03-17 00:00 | 32 | 0d |
| 34 | 2.10 | **自动复合** | 3d? | 2021-03-17 00:00 | 2021-03-20 00:00 | 27 | 0d |
| 35 | 2.10.1 | 中逆移动 | 24h? | 2021-03-17 00:00 | 2021-03-18 00:00 | 27 | 0d |
| 36 | 2.10.2 | 逆中移动 | 12h? | 2021-03-18 00:00 | 2021-03-18 12:00 | 35 | 0d |
| 37 | 2.10.3 | 中顺移动 | 24h? | 2021-03-18 12:00 | 2021-03-19 12:00 | 36 | 0d |
| 38 | 2.10.4 | 顺中移动 | 12h? | 2021-03-19 12:00 | 2021-03-20 00:00 | 37 | 0d |
| 39 | 2.11 | 稳定性 | 72h | 2021-03-20 00:00 | 2021-03-23 00:00 | 34 | 0d |
| 40 | 3 | 完善优化阶段 | 14d? | 2021-03-23 00:00 | 2021-04-06 00:00 | 4 | 0d |
